# GANTT_FFM2

Schedule from MS Project, 2013-12-23 to 2014-06-06, 7 hours a day.
Microsoft

## Calendars

- ESGI: Mon-Fri 21:00-23:59; Sat 10:00-13:00, 15:00-19:00, 21:00-23:59; Sun 10:00-13:00, 15:00-19:00, 21:00-22:00.

## Resources

| Resource |
| --- |
| Thomas (P) |
| Thomas (A) |

## Schedule

| ID | WBS | Task | Duration | Start | Finish | Predecessors | Total slack | Free slack | Deadline | Resources | Work |
| --- | --- | --- | --- | --- | --- | --- | --- | --- | --- | --- | --- |
| 1 | 1 | **ALPHA** | 17.84d | 2013-12-23 | 2014-01-19 |  | 3.21d | 0d | 2014-02-11 |  | 178h |
| 2 | 1.1 | **Création des entités de base** | 12.27d | 2013-12-23 | 2014-01-11 |  | 3.21d |  |  |  | 100h |
| 3 | 1.1.1 | **Personnages** | 12.27d | 2013-12-23 | 2014-01-11 |  | 3.21d |  |  |  | 100h |
| 4 | 1.1.1.1 | Gestion des déplacements | 3h | 2013-12-23 | 2013-12-24 |  | 13.05d | 0d |  | Thomas (A) | 3h |
| 5 | 1.1.1.2 | **Joueur** | 1.29d | 2013-12-24 | 2013-12-27 |  | 13.05d |  |  |  | 9h |
| 6 | 1.1.1.2.1 | Gestion du déplacement au clavier | 3h | 2013-12-24 | 2013-12-25 | 4 | 13.05d | 0d |  | Thomas (A) | 3h |
| 7 | 1.1.1.2.2 | Gestion de la caméra | 6h | 2013-12-25 | 2013-12-27 | 6 | 13.05d | 0d |  | Thomas (A) | 6h |
| 8 | 1.1.1.3 | Gestion des collisions | 3h | 2013-12-27 | 2013-12-28 | 7 | 13.05d | 0d |  | Thomas (A) | 3h |
| 9 | 1.1.1.4 | Création de la table d'objets | 3h | 2013-12-23 | 2013-12-24 |  | 3.21d | 0d |  | Thomas (P) | 3h |
| 10 | 1.1.1.5 | Gestion de l'inventaire | 3h | 2013-12-24 | 2013-12-25 | 9 | 3.21d | 0d |  | Thomas (P) | 3h |
| 11 | 1.1.1.6 | Création d'entrées-types pour la table d'objets | 1h | 2013-12-25 | 2013-12-25 | 9, 10 | 3.21d | 0d |  | Thomas (P) | 1h |
| 12 | 1.1.1.7 | Création de la table de monstres | 3h | 2013-12-28 | 2013-12-28 | 8 | 13.05d | 0d |  | Thomas (A) | 3h |
| 13 | 1.1.1.8 | Création d'entrées-types pour la table de monstres | 1h | 2013-12-28 | 2013-12-28 | 12 | 13.05d | 0d |  | Thomas (A) | 1h |
| 14 | 1.1.1.9 | **IA** | 4.29d | 2013-12-28 | 2014-01-04 |  | 13.05d |  |  |  | 30h |
| 15 | 1.1.1.9.1 | Mise en place des bases de l'IA | 6h | 2013-12-28 | 2013-12-29 | 13 | 13.05d | 0d |  | Thomas (A) | 6h |
| 16 | 1.1.1.9.2 | Mise en place du pathfinding | 24h | 2013-12-29 | 2014-01-04 | 15 | 13.05d | 3.55d |  | Thomas (A) | 24h |
| 17 | 1.1.1.10 | Création de l'animator de personnage | 9.55d | 2013-12-25 | 2014-01-08 | 11 | 3.21d | 0d |  | Thomas (P) | 28h |
| 18 | 1.1.1.11 | **Gestion des attaques de base** | 1.29d | 2014-01-08 | 2014-01-11 |  | 3.64d |  |  |  | 13h |
| 19 | 1.1.1.11.1 | Corps-à-corps | 7h | 2014-01-08 | 2014-01-11 | 8, 17, 16 | 9.5d |  |  | Thomas (A) | 7h |
| 20 | 1.1.1.11.2 | Projectiles | 6h | 2014-01-09 | 2014-01-11 | 17FS+3h | 3.21d | 0d |  | Thomas (P) | 6h |
| 21 | 1.1.1.12 | Gestion des statistiques de base | 3h | 2014-01-11 | 2014-01-11 | 20 | 3.21d | 0d |  | Thomas (P) | 3h |
| 22 | 1.2 | **Arbre des compétences** | 3d | 2014-01-11 | 2014-01-15 |  | 3.21d |  |  |  | 36h |
| 23 | 1.2.1 | Mise en place de l'arbre des compétences | 15h | 2014-01-11 | 2014-01-13 | 21 | 3.21d | 0d |  | Thomas (A); Thomas (P) | 30h |
| 24 | 1.2.2 | Intégrer aux joueurs | 6h | 2014-01-13 | 2014-01-15 | 23 | 3.21d | 0d |  | Thomas (A) | 6h |

| ID | WBS | Task | Duration | Start | Finish | Predecessors | Total slack | Free slack | Deadline | Resources | Work |
| --- | --- | --- | --- | --- | --- | --- | --- | --- | --- | --- | --- |
| 25 | 1.3 | **Création d'une carte de test** | 1.71d | 2014-01-13 | 2014-01-17 |  | 3.21d |  |  |  | 12h |
| 26 | 1.3.1 | Création du terrain | 3h | 2014-01-13 | 2014-01-14 | 23 | 3.21d | 0d |  | Thomas (P) | 3h |
| 27 | 1.3.2 | Créations des spawners | 6h | 2014-01-14 | 2014-01-16 | 26 | 3.21d | 0d |  | Thomas (P) | 6h |
| 28 | 1.3.3 | Ajout des entitées | 3h | 2014-01-16 | 2014-01-17 | 27 | 3.21d | 0d |  | Thomas (P) | 3h |
| 29 | 1.4 | Première approche reseau | 9h | 2014-01-15 | 2014-01-18 | 24 | 3.21d | 0d |  | Thomas (A) | 9h |
| 30 | 1.5 | **Interfaces** | 1.71d | 2014-01-17 | 2014-01-19 |  | 3.21d |  |  |  | 21h |
| 31 | 1.5.1 | Menu de départ | 12h | 2014-01-17 | 2014-01-19 | 28 | 3.21d |  |  | Thomas (P) | 12h |
| 32 | 1.5.2 | Menus ingame | 9h | 2014-01-18 | 2014-01-19 | 29 | 3.21d |  |  | Thomas (A) | 9h |
| 33 | 2 | **BETA** | 55d | 2014-01-19 | 2014-04-12 | 1 | 3.21d | 0d | 2014-04-16 |  | 742h |
| 34 | 2.1 | **Integration graphique de l'arbres des compétences** | 10d | 2014-01-19 | 2014-02-02 |  | 3.21d |  |  |  | 112h |
| 35 | 2.1.1 | Génération procédurale (Outil externe Blender) | 3d | 2014-01-19 | 2014-01-24 |  | 3.21d | 0d |  | Thomas (P) | 21h |
| 36 | 2.1.2 | Icônes de l'arbre | 7d | 2014-01-24 | 2014-02-02 | 35 | 3.21d | 0d |  | Thomas (P) | 49h |
| 37 | 2.1.3 | **Interfaces** | 6d | 2014-01-19 | 2014-01-27 |  | 7.21d |  |  |  | 42h |
| 38 | 2.1.3.1 | Vue complete du Triangle | 3d | 2014-01-19 | 2014-01-24 |  | 7.21d | 0d |  | Thomas (A) | 21h |
| 39 | 2.1.3.2 | Acces rapide du Triangle (present dans le GUI) | 3d | 2014-01-24 | 2014-01-27 | 38 | 7.21d | 0d |  | Thomas (A) | 21h |
| 40 | 2.2 | **Modeling, Design et Son** | 25d | 2014-01-27 | 2014-03-07 |  | 4.21d |  |  |  | 301h |
| 41 | 2.2.1 | Armes | 7d | 2014-02-02 | 2014-02-14 | 36 | 3.21d | 0d |  | Thomas (P) | 49h |
| 42 | 2.2.2 | Armures | 7d | 2014-02-14 | 2014-02-23 | 41 | 3.21d | 0d |  | Thomas (P) | 49h |
| 43 | 2.2.3 | Projectiles | 3d | 2014-01-27 | 2014-02-01 | 39 | 7.21d | 0d |  | Thomas (A) | 21h |
| 44 | 2.2.4 | **Joueurs** | 11d | 2014-02-01 | 2014-02-17 |  | 4.21d |  |  |  | 56h |
| 45 | 2.2.4.1 | Modele du joueur | 5d | 2014-02-01 | 2014-02-09 | 43 | 7.21d | 3d |  | Thomas (A) | 35h |
| 46 | 2.2.4.2 | Interaction modeles Armes/Armure sur les Joueurs | 3d | 2014-02-14 | 2014-02-17 | 41, 45 | 4.21d | 0d |  | Thomas (A) | 21h |
| 47 | 2.2.5 | Monstres | 7d | 2014-02-23 | 2014-03-07 | 42 | 3.21d | 0d |  | Thomas (P) | 49h |
| 48 | 2.2.6 | Décors | 7d | 2014-02-17 | 2014-03-01 | 46 | 4.21d | 0d |  | Thomas (A) | 49h |
| 49 | 2.2.7 | Design sonore | 4d | 2014-03-01 | 2014-03-07 | 48 | 4.21d | 0d |  | Thomas (A) | 28h |

| ID | WBS | Task | Duration | Start | Finish | Predecessors | Total slack | Free slack | Resources | Work |
| --- | --- | --- | --- | --- | --- | --- | --- | --- | --- | --- |
| 50 | 2.3 | **Cartes** | 5d | 2014-03-07 | 2014-03-15 |  | 3.21d |  |  | 70h |
| 51 | 2.3.1 | **Suprématie** | 5d | 2014-03-07 | 2014-03-15 |  | 3.21d |  |  | 35h |
| 52 | 2.3.1.1 | Modélisation de la carte | 3d | 2014-03-07 | 2014-03-10 | 47 | 3.21d | 0d | Thomas (P) | 21h |
| 53 | 2.3.1.2 | Integration des entitées | 2d | 2014-03-10 | 2014-03-15 | 52 | 3.21d | 0d | Thomas (P) | 14h |
| 54 | 2.3.2 | **Course à la gloire** | 5d | 2014-03-07 | 2014-03-15 |  | 4.21d |  |  | 35h |
| 55 | 2.3.2.1 | Modélisation de la carte | 3d | 2014-03-07 | 2014-03-10 | 49 | 4.21d | 0d | Thomas (A) | 21h |
| 56 | 2.3.2.2 | Integration des entitées | 2d | 2014-03-10 | 2014-03-15 | 55 | 4.21d | 0d | Thomas (A) | 14h |
| 57 | 2.4 | **Interfaces** | 13d | 2014-03-15 | 2014-04-02 |  | 3.21d |  |  | 133h |
| 58 | 2.4.1 | **GUI** | 9d | 2014-03-15 | 2014-03-28 |  | 3.21d |  |  | 77h |
| 59 | 2.4.1.1 | Mini-map | 4d | 2014-03-15 | 2014-03-20 | 56 | 4.21d | 0d | Thomas (A) | 28h |
| 60 | 2.4.1.2 | Fenetre des statistiques | 2d | 2014-03-15 | 2014-03-16 | 53 | 3.21d | 0d | Thomas (P) | 14h |
| 61 | 2.4.1.3 | Integration des boutons de menus | 1d | 2014-03-20 | 2014-03-22 | 59 | 4.21d | 0d | Thomas (A) | 7h |
| 62 | 2.4.1.4 | Integration Barre des sorts | 3d | 2014-03-22 | 2014-03-25 | 61 | 4.21d | 0d | Thomas (A) | 21h |
| 63 | 2.4.1.5 | Integration de l'acces rapide au Triangle | 1d | 2014-03-25 | 2014-03-28 | 39, 62 | 4.21d | 0d | Thomas (A) | 7h |
| 64 | 2.4.2 | **Menus démarrage** | 11d | 2014-03-16 | 2014-04-02 |  | 3.21d |  |  | 56h |
| 65 | 2.4.2.1 | **Options** | 4d | 2014-03-16 | 2014-03-22 |  | 3.21d |  |  | 28h |
| 66 | 2.4.2.1.1 | Gestion resolutions | 2d | 2014-03-16 | 2014-03-20 | 60 | 3.21d | 0d | Thomas (P) | 14h |
| 67 | 2.4.2.1.2 | Son | 2d | 2014-03-20 | 2014-03-22 | 66 | 3.21d | 0d | Thomas (P) | 14h |
| 68 | 2.4.2.2 | **Lobby** | 4d | 2014-03-28 | 2014-04-02 |  | 4.21d |  |  | 28h |
| 69 | 2.4.2.2.1 | Interface selection mode de jeu | 3d | 2014-03-28 | 2014-03-31 | 63 | 4.21d | 0d | Thomas (A) | 21h |
| 70 | 2.4.2.2.2 | Recherche de partie | 1d | 2014-03-31 | 2014-04-02 | 69 | 4.21d | 0d | Thomas (A) | 7h |
| 71 | 2.5 | **Gestion réseau** | 9d | 2014-03-22 | 2014-04-05 |  | 3.21d |  |  | 63h |
| 72 | 2.5.1 | Traitement du brouillard de guerre | 3d | 2014-03-22 | 2014-03-28 | 67 | 3.21d | 0d | Thomas (P) | 21h |
| 73 | 2.5.2 | Filtrage des données envoyés au client | 2d | 2014-03-28 | 2014-03-30 | 72 | 3.21d | 0d | Thomas (P) | 14h |
| 74 | 2.5.3 | Prédiction | 2d | 2014-03-30 | 2014-04-02 | 73 | 3.21d | 0d | Thomas (P) | 14h |
| 75 | 2.5.4 | Reconnexion | 2d | 2014-04-02 | 2014-04-05 | 74 | 3.21d | 0d | Thomas (P) | 14h |

| ID | WBS | Task | Duration | Start | Finish | Predecessors | Total slack | Free slack | Deadline | Resources | Work |
| --- | --- | --- | --- | --- | --- | --- | --- | --- | --- | --- | --- |
| 76 | 2.6 | **Entitees Joueur et Non-joueur** | 6d | 2014-04-02 | 2014-04-12 |  | 3.21d |  |  |  | 63h |
| 77 | 2.6.1 | **Joueurs** | 2d | 2014-04-02 | 2014-04-05 |  | 4.21d |  |  |  | 14h |
| 78 | 2.6.1.1 | Gestion des raccourcis Clavier / souris | 2d | 2014-04-02 | 2014-04-05 | 70 | 4.21d | 0d |  | Thomas (A) | 14h |
| 79 | 2.6.2 | **Non-joueur** | 4d | 2014-04-05 | 2014-04-12 |  | 3.21d |  |  |  | 49h |
| 80 | 2.6.2.1 | **IA** | 3d | 2014-04-05 | 2014-04-10 |  | 4.21d |  |  |  | 21h |
| 81 | 2.6.2.1.1 | Amélioration de l'IA existante | 3d | 2014-04-05 | 2014-04-10 | 78 | 4.21d |  |  | Thomas (A) | 21h |
| 82 | 2.6.2.2 | **Camps de monstres** | 1d | 2014-04-05 | 2014-04-06 |  | 3.21d |  |  |  | 7h |
| 83 | 2.6.2.2.1 | Gestion evolution camp | 1d | 2014-04-05 | 2014-04-06 | 75 | 3.21d | 0d |  | Thomas (P) | 7h |
| 84 | 2.6.2.3 | Gestion d'évenements uniques | 3d | 2014-04-06 | 2014-04-12 | 83 | 3.21d | 0d |  | Thomas (P) | 21h |
| 85 | 3 | **Rendu final** | 12.49d | 2014-04-12 | 2014-04-29 | 33 | 17.35d | 0d | 2014-06-01 |  | 174.83h |
| 86 | 3.1 | Correction de bugs | 12.49d | 2014-04-12 | 2014-04-29 |  | 17.35d |  |  | Thomas (A); Thomas (P) | 174.83h |
| 87 | 4 | **Soutenance** | 24.65d | 2014-04-29 | 2014-06-06 | 85 | 17.35d |  | 2014-07-01 |  | 309.17h |
| 88 | 4.1 | Préparation | 24.65d | 2014-04-29 | 2014-06-06 |  | 17.35d |  |  | Thomas (A); Thomas (P) | 309.17h |
